# Routing Database

Schedule from MS Project, 2002-07-15 to 2003-06-30.
City of New York

## Calendars

- Standard: Mon-Fri 08:00-12:00, 13:00-17:00; Sat-Sun off.

## Schedule

| ID | Task | Duration | Start | Finish | Total slack | Constraint |
| --- | --- | --- | --- | --- | --- | --- |
| 1 | Develop Specifications for Routing Database | 4w | 2002-07-15 | 2002-08-12 | 230d |  |
| 2 | Identify Data Sources and Evaluate Data Quality | 4w | 2002-07-22 | 2002-08-19 | 225d | start no earlier than 2002-07-22 |
| 3 | Assemble Existing Data for Pilot Area | 6w | 2002-08-12 | 2002-09-23 | 200d | start no earlier than 2002-08-12 |
| 4 | Supplement Existing Data with Field Data | 4w | 2002-09-09 | 2002-10-07 | 190d | start no earlier than 2002-09-09 |
| 5 | Test Data in Demonstration Area and Fine Tune | 2w | 2002-09-30 | 2002-10-14 | 185d | start no earlier than 2002-09-30 |
| 6 | Develop Citywide Routing Database Plan | 2w | 2002-09-30 | 2002-10-14 | 185d | start no earlier than 2002-09-30 |
| 7 | Collect and Integrate Data | 10w | 2002-10-14 | 2002-12-23 | 135d | start no earlier than 2002-10-14 |
| 8 | Perform Field Data Collection and Validation | 10w | 2002-12-02 | 2003-02-10 | 100d | start no earlier than 2002-12-02 |
| 9 | Test Data and Fine Tune | 5w | 2003-01-20 | 2003-02-24 | 90d | start no earlier than 2003-01-20 |
| 10 | Develop Database Maintenance Operation | 6w | 2003-02-10 | 2003-03-24 | 70d | start no earlier than 2003-02-10 |
| 11 | Integrate Routing Into OEM EMOLS Applications | 8w | 2003-02-24 | 2003-04-21 | 50d | start no earlier than 2003-02-24 |
| 12 | Integrate Routing Database into Public Safety Agency Operations | 15w | 2003-03-17 | 2003-06-30 | 0d | start no earlier than 2003-03-17 |
